# Cambio aplicativo de compras

Schedule from MS Project, 2026-09-01 to 2027-05-03, status date 2026-11-17, 9 hours a day, A marks actual dates.

## Calendars

- festivos_hasta_2025: Mon-Fri 08:00-13:00, 14:00-18:00; Sat-Sun off. Exceptions (off unless hours are given): 2026-10-12 (Festivo), 2026-11-02 (Festivo), 2026-11-16 (Festivo), 2026-12-08 (Festivo), 2026-12-25 (Festivo), 2027-01-01 (Festivo), 2027-01-11 (Festivo), 2027-03-22 (Festivo), 2027-03-25 to 2027-03-26 (Festivo).

## Schedule

| ID | WBS | Task | Duration | Start | Finish | Predecessors | Complete | Remaining | Total slack | Free slack | Constraint | Salud | %Real_Base | %Esper_Base | Frt_Real | Frt_Esper |
| --- | --- | --- | --- | --- | --- | --- | --- | --- | --- | --- | --- | --- | --- | --- | --- | --- |
| 1 | 1 | **Inicio** | 37d | 2026-09-01 A | 2026-10-22 A |  | 100% |  |  |  |  | Azul | 100% | 100% |  |  |
| 2 | 1.1 | Planificación del proyecto | 10d | 2026-09-01 A | 2026-09-14 A |  | 100% |  |  |  | start no earlier than 2026-09-01 | Azul | 100% | 100% |  |  |
| 3 | 1.2 | Artefacto de entrada (Riesgo) | 15d | 2026-10-01 A | 2026-10-22 A | 2 | 100% |  |  |  | start no earlier than 2026-10-01 | Azul | 100% | 100% |  |  |
| 4 | 2 | **Entendimiento y análisis** | 21d | 2026-10-05 A | 2026-11-04 A |  | 100% |  |  |  |  | Azul | 100% | 100% |  |  |
| 5 | 2.1 | Entendimiento de flujos | 10d | 2026-10-05 A | 2026-10-19 A |  | 100% |  |  |  | start no earlier than 2026-10-05 | Azul | 100% | 100% |  |  |
| 6 | 2.2 | Levantamiento de flujos finales | 10d | 2026-10-06 A | 2026-10-20 A |  | 100% |  |  |  | start no earlier than 2026-10-06 | Azul | 100% | 100% |  |  |
| 7 | 2.3 | Análisis de herramienta estandar | 5d | 2026-10-21 A | 2026-10-27 A | 6 | 100% |  |  |  | start no earlier than 2026-10-21 | Azul | 100% | 100% |  |  |
| 8 | 2.4 | Aprobación ambiente UAT | 5d | 2026-10-28 A | 2026-11-04 A | 7 | 100% |  |  |  | start no earlier than 2026-10-28 | Azul | 100% | 100% |  |  |
| 9 | 3 | **Migraciones** | 105d | 2026-10-19 A | 2027-03-23 |  | 10% | 93.98d | 27d |  |  | Rojo | 10% | 12% | 0,1 | 0,12 |
| 10 | 3.1 | **Datos** | 85d | 2026-10-19 A | 2027-02-22 |  | 18% | 70.12d | 47d |  |  | Amarillo | 18% | 19% | 0,18 | 0,19 |
| 11 | 3.1.1 | Inventario de información historica | 15d | 2026-10-19 A | 2026-11-09 A |  | 100% |  |  |  | start no earlier than 2026-10-19 | Azul | 100% | 100% |  |  |
| 12 | 3.1.2 | Migración service desk | 10d | 2026-11-10 A | 2026-11-24 | 11 | 20% | 8d | 107d |  | start no earlier than 2026-11-10 | Rojo | 20% | 40% | 0,2 | 0,4 |
| 13 | 3.1.3 | Módulo proveedores: Maestro de proveedores (Incluyendo regimen tributario) | 10d | 2026-11-10 A | 2026-11-24 | 11 | 40% | 6d | 47d | 0d | start no earlier than 2026-11-10 | Verde | 40% | 40% | 0,4 | 0,4 |
| 14 | 3.1.4 | Módulo de compras: Maestro de items (Articlos y cuenta contable) | 10d | 2026-11-25 | 2026-12-09 | 13 |  |  | 97d |  | start no earlier than 2026-11-25 | Gris | 0% | 0% |  |  |
| 15 | 3.1.5 | Módulo de compras: Maestro de centros de costos) | 15d | 2026-11-25 | 2026-12-16 | 13 |  |  | 92d |  | start no earlier than 2026-11-25 | Gris | 0% | 0% |  |  |
| 16 | 3.1.6 | Migración presupuesto 2026 y 2027 | 10d | 2026-11-25 | 2026-12-09 | 13 |  |  | 47d | 0d | start no earlier than 2026-11-25 | Gris | 0% | 0% |  |  |
| 17 | 3.1.7 | Carga inicial | 15d | 2026-12-10 | 2026-12-31 | 16 |  |  | 47d | 0d | start no earlier than 2026-12-10 | Gris | 0% | 0% |  |  |
| 18 | 3.1.8 | Validación | 5d | 2027-01-04 | 2027-01-08 | 17 |  |  | 47d | 0d | start no earlier than 2027-01-04 | Gris | 0% | 0% |  |  |
| 19 | 3.1.9 | Conciliación | 10d | 2027-01-12 | 2027-01-25 | 18 |  |  | 47d | 0d | start no earlier than 2027-01-12 | Gris | 0% | 0% |  |  |
| 20 | 3.1.10 | Ajustes | 10d | 2027-01-26 | 2027-02-08 | 19 |  |  | 47d | 0d | start no earlier than 2027-01-26 | Gris | 0% | 0% |  |  |
| 21 | 3.1.11 | Migración final | 10d | 2027-02-09 | 2027-02-22 | 20 |  |  | 47d |  | start no earlier than 2027-02-09 | Gris | 0% | 0% |  |  |
| 22 | 3.2 | **Sistema SISA** | 60d | 2026-11-10 A | 2027-02-08 |  | 7% | 56d | 57d |  |  | Verde | 7% | 7% | 0,07 | 0,07 |
| 23 | 3.2.1 | Backup histórico hacia la herramienta | 5d | 2026-11-10 A | 2026-11-17 | 11 | 80% | 1d | 57d | 0d | start no earlier than 2026-11-10 | Verde | 80% | 80% | 0,8 | 0,8 |
| 24 | 3.2.2 | Validación de respaldos | 5d | 2026-11-18 | 2026-11-24 | 23 |  |  | 57d | 0d | start no earlier than 2026-11-18 | Gris | 0% | 0% |  |  |
| 25 | 3.2.3 | Extracción | 10d | 2026-11-25 | 2026-12-09 | 24 |  |  | 57d | 0d | start no earlier than 2026-11-25 | Gris | 0% | 0% |  |  |
| 26 | 3.2.4 | Carga inicial | 10d | 2026-12-10 | 2026-12-23 | 25 |  |  | 57d | 0d | start no earlier than 2026-12-10 | Gris | 0% | 0% |  |  |
| 27 | 3.2.5 | Validación | 10d | 2026-12-24 | 2027-01-08 | 26 |  |  | 57d | 0d | start no earlier than 2026-12-24 | Gris | 0% | 0% |  |  |
| 28 | 3.2.6 | Pruebas de restauración | 15d | 2027-01-12 | 2027-02-01 | 27 |  |  | 57d | 0d | start no earlier than 2027-01-12 | Gris | 0% | 0% |  |  |
| 29 | 3.2.7 | Apagado servicios SISA | 5d | 2027-02-02 | 2027-02-08 | 28 |  |  | 57d |  | start no earlier than 2027-02-02 | Gris | 0% | 0% |  |  |

Notes:
- 3: 17 nov. se realizan ajustes solicitados por riesgos y se agenda reunión con el área para el 19/11 / 12/11 No se ha finalizado debido a que hace falta agendar sesión con riesgos para el Vobo (pendiente confirmar fecha). / 03/11 Se realizará la entrega de la matriz el día 03/11 a Nidia y se validará la revisión con Nidia para establecer fecha de cierre. / 27 oct, se identificaron 50 riesgos de los cuales a cada uno debe documentar plan de acción y controles. / Proponer a Nidia separar por los entregables. / 23 oct, se ha realizado las sesiones con la áreas de control, sin embargo esta pendiente contar con las observaciones de cada una de ellas. / Se estima contar con la matriz consolidada el 13 de noviembre.
- 5: 23 oct, pendiente revisión de contratos, por que fueron varias áreas las cuales se tenian que involucrar.
- 12: 17 nov. Se envía correo a proveedor pero aún no se confirma la fecha para poder dar avance a la actividad (fecha por confirmar). / Text10: Se tiene generación de reportes y solicitando al proveedor el como se extraen adjuntos
- 13: Text10: Se tiene al 100%
- 23: Text10: Se realiza el back up, se enviará a negocio para extracción y confirmación de data

| ID | WBS | Task | Duration | Start | Finish | Predecessors | Complete | Remaining | Total slack | Free slack | Constraint | Salud | %Real_Base | Frt_Real | Frt_Esper | %Esper_Base | Text10 |
| --- | --- | --- | --- | --- | --- | --- | --- | --- | --- | --- | --- | --- | --- | --- | --- | --- | --- |
| 30 | 3.3 | **Otros sistemas** | 90d | 2026-11-10 A | 2027-03-23 |  | 4% | 86d | 27d |  |  | Verde | 4% | 0,04 | 0,04 | 4% |  |
| 31 | 3.3.1 | WorkFlow de pagos: Vigia, SignNow, AS400, EntraID, Bancos, Workflow Pagos | 20d | 2026-11-10 A | 2026-12-09 | 11 | 20% | 16d | 27d | 0d | start no earlier than 2026-11-10 | Verde | 20% | 0,2 | 0,2 | 20% | Se elimina FORMA se trabjará con VIGIA |
| 32 | 3.3.2 | Siigo, Service Desk | 15d | 2026-12-10 | 2026-12-31 | 31 |  |  | 27d | 0d | start no earlier than 2026-12-10 | Gris | 0% |  |  | 0% |  |
| 33 | 3.3.3 | Optima | 15d | 2027-01-04 | 2027-01-25 | 32 |  |  | 27d | 0d | start no earlier than 2027-01-04 | Gris | 0% |  |  | 0% |  |
| 34 | 3.3.4 | Appsheet Célula cumplimiento | 10d | 2027-01-26 | 2027-02-08 | 33 |  |  | 27d | 0d | start no earlier than 2027-01-26 | Gris | 0% |  |  | 0% |  |
| 35 | 3.3.5 | Extracción | 15d | 2027-02-09 | 2027-03-01 | 34 |  |  | 27d | 0d | start no earlier than 2027-02-09 | Gris | 0% |  |  | 0% |  |
| 36 | 3.3.6 | Carga inicial | 10d | 2027-03-02 | 2027-03-15 | 35 |  |  | 27d | 0d | start no earlier than 2027-03-02 | Gris | 0% |  |  | 0% |  |
| 37 | 3.3.7 | Validación | 5d | 2027-03-16 | 2027-03-23 | 36 |  |  | 27d |  | start no earlier than 2027-03-16 | Gris | 0% |  |  | 0% |  |
| 38 | 3.4 | **Pagos y tesoreria** | 25d | 2026-11-10 A | 2026-12-16 |  | 8% | 23.05d | 92d |  |  | Rojo | 8% | 0,08 | 0,16 | 16% |  |
| 39 | 3.4.1 | Migración de información de pagos y tesorería | 15d | 2026-11-10 A | 2026-12-01 | 11 | 13% | 13.05d | 92d | 0d | start no earlier than 2026-11-10 | Rojo | 13% | 0,13 | 0,27 | 27% |  |
| 40 | 3.4.2 | Recepción de información | 10d | 2026-12-02 | 2026-12-16 | 39 |  |  | 92d |  | start no earlier than 2026-12-02 | Gris | 0% |  |  | 0% |  |
| 41 | 4 | **Ejecución de módulos** | 74d | 2026-10-13 A | 2027-02-01 |  | 19% | 60d | 62d |  |  | Rojo | 19% | 0,19 | 0,24 | 24% |  |
| 42 | 4.1 | **F01: Plataforma General (Roles, Seguridad)** | 46d | 2026-10-13 A | 2026-12-18 |  | 57% | 19.55d | 90d |  |  | Rojo | 57% | 0,57 | 0,59 | 59% |  |
| 43 | 4.1.1 | Refinamiento de flujos | 5d | 2026-10-13 A | 2026-10-19 A |  | 100% |  |  |  | start no earlier than 2026-10-13 | Azul | 100% |  |  | 100% |  |
| 44 | 4.1.2 | Análisis de Herramienta estándar | 10d | 2026-10-13 A | 2026-10-26 A |  | 100% |  |  |  | start no earlier than 2026-10-13 | Azul | 100% |  |  | 100% |  |
| 45 | 4.1.3 | Reglas de firewall, permisos aplicaciones | 5d | 2026-10-27 A | 2026-11-03 A | 44 | 100% |  |  |  | start no earlier than 2026-10-27 | Azul | 100% |  |  | 100% |  |
| 46 | 4.1.4 | Desarrollo de parametrización ENTRA ID | 5d | 2026-10-27 A | 2026-11-03 A | 44 | 100% |  |  |  | start no earlier than 2026-10-27 | Azul | 100% |  |  | 100% |  |
| 47 | 4.1.5 | Pruebas de parametrización | 2d | 2026-11-04 A | 2026-11-05 | 46 | 90% | 0.2d | 0.9d | 0d | start no earlier than 2026-11-04 | Rojo | 90% | 0,9 |  | 100% | Se estan ajustando incidencias |
| 48 | 4.1.6 | Aprobación de parametrización | 1d | 2026-11-06 A | 2026-11-06 | 47 | 90% | 0.1d | 4.5d | 0d | start no earlier than 2026-11-06 | Rojo | 90% | 0,9 |  | 100% |  |
| 49 | 4.1.7 | Configuración de ENTRA ID | 5d | 2026-11-09 A | 2026-11-13 | 48 | 90% | 0.5d | 93d | 0d | start no earlier than 2026-11-09 | Rojo | 90% | 0,9 |  | 100% |  |
| 50 | 4.1.8 | Integración con configuración ENTRA ID | 3d | 2026-11-17 | 2026-11-19 | 49 |  |  | 110d |  | start no earlier than 2026-11-17 | Gris | 0% |  |  | 0% |  |
| 51 | 4.1.9 | Validar accesos del equipo a cada ambiente | 3d | 2026-12-01 | 2026-12-03 | 52 |  |  | 90d | 0d | start no earlier than 2026-12-01 | Gris | 0% |  |  | 0% |  |
| 52 | 4.1.10 | Creación y definición de grupos | 7d | 2026-11-20 | 2026-11-30 | 49 |  |  | 90d | 0d | start no earlier than 2026-11-20 | Gris | 0% |  |  | 0% | 12% |
| 53 | 4.1.11 | Pruebas en ambiente de pruebas | 5d | 2026-12-04 | 2026-12-11 | 51 |  |  | 90d | 0d | start no earlier than 2026-12-04 | Gris | 0% |  |  | 0% | 12% |
| 54 | 4.1.12 | Pruebas en ambiente de producción | 5d | 2026-12-14 | 2026-12-18 | 53 |  |  | 90d |  | start no earlier than 2026-12-14 | Gris | 0% |  |  | 0% |  |

Notes:
- 31: 17 nov. Se realiza sesión con proveedor para avanzar en el workflow (17/11) con base en los resultados se sigue avanzando en las demás configuraciones.
- 39: 17 nov. Sigue en el mismo status , se espera avanzar el 17/11, de acuerdo con la sesión citada. , se propone trabajar actividades en paralelo para dar cierre a cada actividad. / 12/11 Se envió al proveedor toda la información requerida
- 47: 17 nov. Se realizaron los ajustes y se validará con el proveedor que ya se tenga la parametrización y se encuentre funcionando (17/11)

| ID | WBS | Task | Duration | Start | Finish | Predecessors | Complete | Remaining | Total slack | Free slack | Constraint | Salud | %Real_Base | Frt_Real | Frt_Esper | %Esper_Base |
| --- | --- | --- | --- | --- | --- | --- | --- | --- | --- | --- | --- | --- | --- | --- | --- | --- |
| 55 | 4.2 | **F02: Módulos de Proveedores Registro - Portal** | 54d | 2026-10-20 A | 2027-01-08 |  | 48% | 28.24d | 77d |  |  | Amarillo | 48% | 0,48 | 0,49 | 49% |
| 56 | 4.2.1 | Refinamiento de flujos | 5d | 2026-10-20 A | 2026-10-26 A | 43 | 100% |  |  |  | start no earlier than 2026-10-20 | Azul | 100% |  |  | 100% |
| 57 | 4.2.2 | Definición de controles del proceso | 3d | 2026-10-27 A | 2026-10-29 A | 56 | 100% |  |  |  | start no earlier than 2026-10-27 | Azul | 100% |  |  | 100% |
| 58 | 4.2.3 | Análisis de Herramienta estándar | 3d | 2026-10-30 A | 2026-11-04 A | 57 | 100% |  |  |  | start no earlier than 2026-10-30 | Azul | 100% |  |  | 100% |
| 59 | 4.2.4 | Desarrollo de parametrización | 15d | 2026-10-27 A | 2026-11-18 | 56 | 80% | 3d | 111d | 0d | start no earlier than 2026-10-27 | Rojo | 80% | 0,8 | 0,87 | 87% |
| 60 | 4.2.5 | Pruebas de parametrización | 15d | 2026-10-30 A | 2026-11-23 | 59SS+3d | 67% | 4.95d | 108d | 0d | start no earlier than 2026-10-30 | Verde | 67% | 0,67 | 0,67 | 67% |
| 61 | 4.2.6 | Revisión funcional de la configuración | 15d | 2026-11-04 A | 2026-11-25 | 60SS+2d | 50% | 7.5d | 77d | 0d | start no earlier than 2026-11-04 | Rojo | 50% | 0,5 | 0,53 | 53% |
| 62 | 4.2.7 | Aprobación de parametrización en pruebas | 2d | 2026-11-26 | 2026-11-27 | 61 |  |  | 77d | 0d | start no earlier than 2026-11-26 | Gris | 0% |  |  | 0% |
| 63 | 4.2.8 | Ajustes post-revisión | 10d | 2026-11-30 | 2026-12-14 | 62SS+2d |  |  | 77d | 0d | start no earlier than 2026-11-30 | Gris | 0% |  |  | 0% |
| 64 | 4.2.9 | Revisión controles riesgo y otros frentes (2 semanas antes de producción) | 1d | 2026-12-15 | 2026-12-15 | 63 |  |  | 77d | 0d | start no earlier than 2026-12-15 | Gris | 0% |  |  | 0% |
| 65 | 4.2.10 | Aprobación de parametrización en producción | 1d | 2026-12-16 | 2026-12-16 | 64 |  |  | 77d | 0d | start no earlier than 2026-12-16 | Gris | 0% |  |  | 0% |
| 66 | 4.2.11 | Gestión del cambio - Capacitación | 15d | 2026-12-17 | 2027-01-08 | 65 |  |  | 77d |  | start no earlier than 2026-12-17 | Gris | 0% |  |  | 0% |
| 67 | 4.3 | **F03: Módulos de Proveedores - Evaluación** | 34d | 2026-10-27 A | 2026-12-16 |  | 34% | 22.38d | 92d |  |  | Rojo | 34% | 0,34 | 0,49 | 49% |
| 68 | 4.3.1 | Refinamiento de flujos | 5d | 2026-10-27 A | 2026-11-03 A | 56 | 100% |  |  |  | start no earlier than 2026-10-27 | Azul | 100% |  |  | 100% |
| 69 | 4.3.2 | Definición de controles del proceso | 3d | 2026-11-04 A | 2026-11-06 | 68 | 60% | 1.2d | 118d |  | start no earlier than 2026-11-04 | Rojo | 60% | 0,6 |  | 100% |
| 70 | 4.3.3 | Análisis de Herramienta estándar | 3d | 2026-11-09 A | 2026-11-11 A | 69 | 100% |  |  |  | start no earlier than 2026-11-09 | Azul | 100% |  |  | 100% |
| 71 | 4.3.4 | Desarrollo de parametrización | 10d | 2026-11-04 A | 2026-11-18 | 68 | 70% | 3d | 111d | 0d | start no earlier than 2026-11-04 | Rojo | 70% | 0,7 | 0,8 | 80% |
| 72 | 4.3.5 | Pruebas de parametrización | 10d | 2026-11-09 | 2026-11-23 | 71SS+3d |  |  | 2d | 0d | start no earlier than 2026-11-09 | Rojo | 0% |  | 0,5 | 50% |
| 73 | 4.3.6 | Revisión funcional de la configuración | 10d | 2026-11-11 A | 2026-11-25 | 72SS+2d | 20% | 8d | 92d | 0d | start no earlier than 2026-11-11 | Rojo | 20% | 0,2 | 0,3 | 30% |
| 74 | 4.3.7 | Aprobación de parametrización en pruebas | 2d | 2026-11-26 | 2026-11-27 | 73 |  |  | 92d | 0d | start no earlier than 2026-11-26 | Gris | 0% |  |  | 0% |
| 75 | 4.3.8 | Ajustes post-revisión | 5d | 2026-11-30 | 2026-12-04 | 74SS+2d |  |  | 92d | 0d | start no earlier than 2026-11-30 | Gris | 0% |  |  | 0% |
| 76 | 4.3.9 | Revisión controles riesgo y otros frentes (2 semanas antes de producción) | 1d | 2026-12-07 | 2026-12-07 | 75 |  |  | 92d | 0d | start no earlier than 2026-12-07 | Gris | 0% |  |  | 0% |
| 77 | 4.3.10 | Aprobación de parametrización en producción | 1d | 2026-12-09 | 2026-12-09 | 76 |  |  | 92d | 0d | start no earlier than 2026-12-09 | Gris | 0% |  |  | 0% |
| 78 | 4.3.11 | Gestión del cambio - Capacitación | 5d | 2026-12-10 | 2026-12-16 | 77 |  |  | 92d |  | start no earlier than 2026-12-10 | Gris | 0% |  |  | 0% |

Notes:
- 56: 27 oct, se tiene una ultim sesión para el refinamiento con el proveedor. Pueden salir ajustes.
- 59: 17 nov. Se realizaron los ajustes y se validará con el proveedor que ya se tenga la parametrización y se encuentre funcionando (17/11)
- 61: 17 nov. Se realizaron los ajustes y se validará con el proveedor que ya se tenga la parametrización y se encuentre funcionando (17/11)
- 68: 12/11 - Se entregó el módulo, se estan realizando pruebas delmódulo anterior en cuanto se finalice, se continúa esta actividad (20/11).
- 69: 17 nov. Se encuentra en revisión y se estima finalizar el 18/11.
- 71: 12/11 Dependiente de la definición de flujos, con base en esta definición se cierra el desarrollo (20/11)
- 72: 17 nov. Se espera iniciar con las pruebas el 18/11

| ID | WBS | Task | Duration | Start | Finish | Predecessors | Total slack | Free slack | Constraint | Salud | %Real_Base | Frt_Esper | %Esper_Base |
| --- | --- | --- | --- | --- | --- | --- | --- | --- | --- | --- | --- | --- | --- |
| 79 | 4.4 | **F04: Módulo de Requisiciones** | 34d | 2026-11-04 | 2026-12-23 |  | 62d |  |  | Rojo | 0% | 0,2 | 20% |
| 80 | 4.4.1 | Refinamiento de flujos | 5d | 2026-11-04 | 2026-11-10 | 68 | 62d | 0d | start no earlier than 2026-11-04 | Rojo | 0% |  | 100% |
| 81 | 4.4.2 | Definición de controles del proceso | 3d | 2026-11-11 | 2026-11-13 | 80 | 110d | 0d | start no earlier than 2026-11-11 | Rojo | 0% |  | 100% |
| 82 | 4.4.3 | Análisis de Herramienta estándar | 3d | 2026-11-17 | 2026-11-19 | 81 | 110d |  | start no earlier than 2026-11-17 | Gris | 0% |  | 0% |
| 83 | 4.4.4 | Desarrollo de parametrización | 10d | 2026-11-11 | 2026-11-25 | 80 | 87d | 0d | start no earlier than 2026-11-11 | Rojo | 0% | 0,3 | 30% |
| 84 | 4.4.5 | Pruebas de parametrización | 10d | 2026-11-17 | 2026-11-30 | 83SS+3d | 87d | 0d | start no earlier than 2026-11-17 | Gris | 0% |  | 0% |
| 85 | 4.4.6 | Revisión funcional de la configuración | 10d | 2026-11-19 | 2026-12-02 | 84SS+2d | 87d | 0d | start no earlier than 2026-11-19 | Gris | 0% |  | 0% |
| 86 | 4.4.7 | Aprobación de parametrización en pruebas | 2d | 2026-12-03 | 2026-12-04 | 85 | 87d | 0d | start no earlier than 2026-12-03 | Gris | 0% |  | 0% |
| 87 | 4.4.8 | Ajustes post-revisión | 5d | 2026-12-07 | 2026-12-14 | 86SS+2d | 87d | 0d | start no earlier than 2026-12-07 | Gris | 0% |  | 0% |
| 88 | 4.4.9 | Revisión controles riesgo y otros frentes (2 semanas antes de producción) | 1d | 2026-12-15 | 2026-12-15 | 87 | 87d | 0d | start no earlier than 2026-12-15 | Gris | 0% |  | 0% |
| 89 | 4.4.10 | Aprobación de parametrización en producción | 1d | 2026-12-16 | 2026-12-16 | 88 | 87d | 0d | start no earlier than 2026-12-16 | Gris | 0% |  | 0% |
| 90 | 4.4.11 | Gestión del cambio - Capacitación | 5d | 2026-12-17 | 2026-12-23 | 89 | 87d |  | start no earlier than 2026-12-17 | Gris | 0% |  | 0% |
| 91 | 4.5 | **F05: Módulos de Compras** | 34d | 2026-11-11 | 2026-12-31 |  | 62d |  |  | Rojo | 0% | 0,05 | 5% |
| 92 | 4.5.1 | Refinamiento de flujos | 5d | 2026-11-11 | 2026-11-18 | 80 | 62d | 0d | start no earlier than 2026-11-11 | Rojo | 0% | 0,6 | 60% |
| 93 | 4.5.2 | Definición de controles del proceso | 3d | 2026-11-19 | 2026-11-23 | 92 | 105d | 0d | start no earlier than 2026-11-19 | Gris | 0% |  | 0% |
| 94 | 4.5.3 | Análisis de Herramienta estándar | 3d | 2026-11-24 | 2026-11-26 | 93 | 105d |  | start no earlier than 2026-11-24 | Gris | 0% |  | 0% |
| 95 | 4.5.4 | Desarrollo de parametrización | 10d | 2026-11-19 | 2026-12-02 | 92 | 82d | 0d | start no earlier than 2026-11-19 | Gris | 0% |  | 0% |
| 96 | 4.5.5 | Pruebas de parametrización | 10d | 2026-11-24 | 2026-12-07 | 95SS+3d | 82d | 0d | start no earlier than 2026-11-24 | Gris | 0% |  | 0% |
| 97 | 4.5.6 | Revisión funcional de la configuración | 10d | 2026-11-26 | 2026-12-10 | 96SS+2d | 82d | 0d | start no earlier than 2026-11-26 | Gris | 0% |  | 0% |
| 98 | 4.5.7 | Aprobación de parametrización en pruebas | 2d | 2026-12-11 | 2026-12-14 | 97 | 82d | 0d | start no earlier than 2026-12-11 | Gris | 0% |  | 0% |
| 99 | 4.5.8 | Ajustes post-revisión | 5d | 2026-12-15 | 2026-12-21 | 98SS+2d | 82d | 0d | start no earlier than 2026-12-15 | Gris | 0% |  | 0% |
| 100 | 4.5.9 | Revisión controles riesgo y otros frentes (2 semanas antes de producción) | 1d | 2026-12-22 | 2026-12-22 | 99 | 82d | 0d | start no earlier than 2026-12-22 | Gris | 0% |  | 0% |
| 101 | 4.5.10 | Aprobación de parametrización en producción | 1d | 2026-12-23 | 2026-12-23 | 100 | 82d | 0d | start no earlier than 2026-12-23 | Gris | 0% |  | 0% |
| 102 | 4.5.11 | Gestión del cambio - Capacitación | 5d | 2026-12-24 | 2026-12-31 | 101 | 82d |  | start no earlier than 2026-12-24 | Gris | 0% |  | 0% |

Notes:
- 80: 17 nov. No se ha podido iniciar por finalización y entrega para pruebas el módulo de evaluación de proveedores, se estran trabajando más horas para finalizar la actividad se espera finalizar el 20/11 / 12/11 No se ha revisado por que se esta pendiente el cierre de proveedores y parametrizaciones para iniciar con requisiones, se ampliaron horas del proyecto de 2 sesiones semanales a 6 sesiones más tareas se esta dedicando más tiempo para finalizar (27/11)
- 81: 17 nov. No se ha podido iniciar por finalización y entrega para pruebas el módulo de evaluación de proveedores, se estran trabajando más horas para finalizar la actividad se espera finalizar el 20/11
- 83: 17 nov. No se ha podido iniciar por finalización y entrega para pruebas el módulo de evaluación de proveedores, se estran trabajando más horas para finalizar la actividad se espera finalizar el 20/11
- 92: 17 nov. No se ha podido iniciar por finalización y entrega para pruebas el módulo de evaluación de proveedores, se estran trabajando más horas, se espera iniciar 23/11 / 12/11 No se ha revisado por que se esta pendiente el cierre de proveedores y parametrizaciones para iniciar con requisiones, se ampliaron horas del proyecto de 2 sesiones semanales a 6 sesiones; más tareas se esta dedicando más tiempo para finalizar (pendiente fecha)

| ID | WBS | Task | Duration | Start | Finish | Predecessors | Total slack | Free slack | Constraint | Salud | %Real_Base | %Esper_Base |
| --- | --- | --- | --- | --- | --- | --- | --- | --- | --- | --- | --- | --- |
| 103 | 4.6 | **F06: Módulo de Presupuesto** | 34d | 2026-11-19 | 2027-01-08 |  | 62d |  |  | Gris | 0% | 0% |
| 104 | 4.6.1 | Refinamiento de flujos | 5d | 2026-11-19 | 2026-11-25 | 92 | 62d | 0d | start no earlier than 2026-11-19 | Gris | 0% | 0% |
| 105 | 4.6.2 | Definición de controles del proceso | 3d | 2026-11-26 | 2026-11-30 | 104 | 100d | 0d | start no earlier than 2026-11-26 | Gris | 0% | 0% |
| 106 | 4.6.3 | Análisis de Herramienta estándar | 3d | 2026-12-01 | 2026-12-03 | 105 | 100d |  | start no earlier than 2026-12-01 | Gris | 0% | 0% |
| 107 | 4.6.4 | Desarrollo de parametrización | 10d | 2026-11-26 | 2026-12-10 | 104 | 77d | 0d | start no earlier than 2026-11-26 | Gris | 0% | 0% |
| 108 | 4.6.5 | Pruebas de parametrización | 10d | 2026-12-01 | 2026-12-15 | 107SS+3d | 77d | 0d | start no earlier than 2026-12-01 | Gris | 0% | 0% |
| 109 | 4.6.6 | Revisión funcional de la configuración | 10d | 2026-12-03 | 2026-12-17 | 108SS+2d | 77d | 0d | start no earlier than 2026-12-03 | Gris | 0% | 0% |
| 110 | 4.6.7 | Aprobación de parametrización en pruebas | 2d | 2026-12-18 | 2026-12-21 | 109 | 77d | 0d | start no earlier than 2026-12-18 | Gris | 0% | 0% |
| 111 | 4.6.8 | Ajustes post-revisión | 5d | 2026-12-22 | 2026-12-29 | 110SS+2d | 77d | 0d | start no earlier than 2026-12-22 | Gris | 0% | 0% |
| 112 | 4.6.9 | Revisión controles riesgo y otros frentes (2 semanas antes de producción) | 1d | 2026-12-30 | 2026-12-30 | 111 | 77d | 0d | start no earlier than 2026-12-30 | Gris | 0% | 0% |
| 113 | 4.6.10 | Aprobación de parametrización en producción | 1d | 2026-12-31 | 2026-12-31 | 112 | 77d | 0d | start no earlier than 2026-12-31 | Gris | 0% | 0% |
| 114 | 4.6.11 | Gestión del cambio - Capacitación | 5d | 2027-01-04 | 2027-01-08 | 113 | 77d |  | start no earlier than 2027-01-04 | Gris | 0% | 0% |
| 115 | 4.7 | **F07: Módulos de Postcompra** | 34d | 2026-11-26 | 2027-01-18 |  | 62d |  |  | Gris | 0% | 0% |
| 116 | 4.7.1 | Refinamiento de flujos | 5d | 2026-11-26 | 2026-12-02 | 104 | 62d | 0d | start no earlier than 2026-11-26 | Gris | 0% | 0% |
| 117 | 4.7.2 | Definición de controles del proceso | 3d | 2026-12-03 | 2026-12-07 | 116 | 95d | 0d | start no earlier than 2026-12-03 | Gris | 0% | 0% |
| 118 | 4.7.3 | Análisis de Herramienta estándar | 3d | 2026-12-09 | 2026-12-11 | 117 | 95d |  | start no earlier than 2026-12-09 | Gris | 0% | 0% |
| 119 | 4.7.4 | Desarrollo de parametrización | 10d | 2026-12-03 | 2026-12-17 | 116 | 72d | 0d | start no earlier than 2026-12-03 | Gris | 0% | 0% |
| 120 | 4.7.5 | Pruebas de parametrización | 10d | 2026-12-09 | 2026-12-22 | 119SS+3d | 72d | 0d | start no earlier than 2026-12-09 | Gris | 0% | 0% |
| 121 | 4.7.6 | Revisión funcional de la configuración | 10d | 2026-12-11 | 2026-12-24 | 120SS+2d | 72d | 0d | start no earlier than 2026-12-11 | Gris | 0% | 0% |
| 122 | 4.7.7 | Aprobación de parametrización en pruebas | 2d | 2026-12-28 | 2026-12-29 | 121 | 72d | 0d | start no earlier than 2026-12-28 | Gris | 0% | 0% |
| 123 | 4.7.8 | Ajustes post-revisión | 5d | 2026-12-30 | 2027-01-06 | 122SS+2d | 72d | 0d | start no earlier than 2026-12-30 | Gris | 0% | 0% |
| 124 | 4.7.9 | Revisión controles riesgo y otros frentes (2 semanas antes de producción) | 1d | 2027-01-07 | 2027-01-07 | 123 | 72d | 0d | start no earlier than 2027-01-07 | Gris | 0% | 0% |
| 125 | 4.7.10 | Aprobación de parametrización en producción | 1d | 2027-01-08 | 2027-01-08 | 124 | 72d | 0d | start no earlier than 2027-01-08 | Gris | 0% | 0% |
| 126 | 4.7.11 | Gestión del cambio - Capacitación | 5d | 2027-01-12 | 2027-01-18 | 125 | 72d |  | start no earlier than 2027-01-12 | Gris | 0% | 0% |

| ID | WBS | Task | Duration | Start | Finish | Predecessors | Complete | Remaining | Total slack | Free slack | Constraint | Salud | %Real_Base | %Esper_Base | Frt_Real | Frt_Esper |
| --- | --- | --- | --- | --- | --- | --- | --- | --- | --- | --- | --- | --- | --- | --- | --- | --- |
| 127 | 4.8 | **F08: Módulo de Contratos** | 39d | 2026-12-03 | 2027-02-01 |  |  |  | 62d |  |  | Gris | 0% | 0% |  |  |
| 128 | 4.8.1 | Refinamiento de flujos | 5d | 2026-12-03 | 2026-12-10 | 116 |  |  | 62d | 0d | start no earlier than 2026-12-03 | Gris | 0% | 0% |  |  |
| 129 | 4.8.2 | Definición de controles del proceso | 3d | 2026-12-11 | 2026-12-15 | 128 |  |  | 90d | 0d | start no earlier than 2026-12-11 | Gris | 0% | 0% |  |  |
| 130 | 4.8.3 | Análisis de Herramienta estándar | 3d | 2026-12-16 | 2026-12-18 | 129 |  |  | 90d |  | start no earlier than 2026-12-16 | Gris | 0% | 0% |  |  |
| 131 | 4.8.4 | Desarrollo de parametrización | 10d | 2026-12-11 | 2026-12-24 | 128 |  |  | 62d | 0d | start no earlier than 2026-12-11 | Gris | 0% | 0% |  |  |
| 132 | 4.8.5 | Pruebas de parametrización | 10d | 2026-12-16 | 2026-12-30 | 131SS+3d |  |  | 62d | 0d | start no earlier than 2026-12-16 | Gris | 0% | 0% |  |  |
| 133 | 4.8.6 | Revisión funcional de la configuración | 10d | 2026-12-18 | 2027-01-04 | 132SS+2d |  |  | 62d | 0d | start no earlier than 2026-12-18 | Gris | 0% | 0% |  |  |
| 134 | 4.8.7 | Aprobación de parametrización en pruebas | 10d | 2027-01-05 | 2027-01-19 | 133 |  |  | 62d | 0d | start no earlier than 2027-01-05 | Gris | 0% | 0% |  |  |
| 135 | 4.8.8 | Ajustes post-revisión | 10d | 2027-01-07 | 2027-01-21 | 134SS+2d |  |  | 62d | 0d | start no earlier than 2027-01-07 | Gris | 0% | 0% |  |  |
| 136 | 4.8.9 | Revisión controles riesgo y otros frentes (2 semanas antes de producción) | 1d | 2027-01-22 | 2027-01-22 | 135 |  |  | 62d | 0d | start no earlier than 2027-01-22 | Gris | 0% | 0% |  |  |
| 137 | 4.8.10 | Aprobación de parametrización en producción | 1d | 2027-01-25 | 2027-01-25 | 136 |  |  | 62d | 0d | start no earlier than 2027-01-25 | Gris | 0% | 0% |  |  |
| 138 | 4.8.11 | Gestión del cambio - Capacitación | 5d | 2027-01-26 | 2027-02-01 | 137 |  |  | 62d |  | start no earlier than 2027-01-26 | Gris | 0% | 0% |  |  |
| 139 | 5 | **Reportes** | 50d | 2026-11-04 A | 2027-01-19 |  | 4% | 48d | 71d |  |  | Rojo | 4% | 7% | 0,04 | 0,07 |
| 140 | 5.1 | **F09: Reporte módulo Proveedores** | 25d | 2026-11-04 A | 2026-12-10 |  | 24% | 19d | 96d |  |  | Rojo | 24% | 32% | 0,24 | 0,32 |
| 141 | 5.1.1 | Entendimiento de parámetros y KPIs | 5d | 2026-11-04 A | 2026-11-10 A | 68 | 100% |  |  |  | start no earlier than 2026-11-04 | Azul | 100% | 100% |  |  |
| 142 | 5.1.2 | Análisis de tableros actuales | 5d | 2026-11-11 A | 2026-11-18 | 141 | 20% | 4d | 96d | 0d | start no earlier than 2026-11-11 | Rojo | 20% | 60% | 0,2 | 0,6 |
| 143 | 5.1.3 | Desarrollo de tableros y reportes | 5d | 2026-11-19 | 2026-11-25 | 142 |  |  | 96d | 0d | start no earlier than 2026-11-19 | Gris | 0% | 0% |  |  |
| 144 | 5.1.4 | Pruebas de tableros y reportes | 5d | 2026-11-26 | 2026-12-02 | 143 |  |  | 96d | 0d | start no earlier than 2026-11-26 | Gris | 0% | 0% |  |  |
| 145 | 5.1.5 | Aprobación de tableros y reportes | 5d | 2026-12-03 | 2026-12-10 | 144 |  |  | 96d |  | start no earlier than 2026-12-03 | Gris | 0% | 0% |  |  |
| 146 | 5.2 | **F10: Reporte módulo Requisiciones** | 25d | 2026-11-11 | 2026-12-17 |  |  |  | 91d |  |  | Rojo | 0% | 12% |  | 0,12 |
| 147 | 5.2.1 | Entendimiento de parámetros y KPIs | 5d | 2026-11-11 | 2026-11-18 | 80 |  |  | 91d | 0d | start no earlier than 2026-11-11 | Rojo | 0% | 60% |  | 0,6 |
| 148 | 5.2.2 | Análisis de tableros actuales | 5d | 2026-11-19 | 2026-11-25 | 147 |  |  | 91d | 0d | start no earlier than 2026-11-19 | Gris | 0% | 0% |  |  |
| 149 | 5.2.3 | Desarrollo de tableros y reportes | 5d | 2026-11-26 | 2026-12-02 | 148 |  |  | 91d | 0d | start no earlier than 2026-11-26 | Gris | 0% | 0% |  |  |
| 150 | 5.2.4 | Pruebas de tableros y reportes | 5d | 2026-12-03 | 2026-12-10 | 149 |  |  | 91d | 0d | start no earlier than 2026-12-03 | Gris | 0% | 0% |  |  |
| 151 | 5.2.5 | Aprobación de tableros y reportes | 5d | 2026-12-11 | 2026-12-17 | 150 |  |  | 91d |  | start no earlier than 2026-12-11 | Gris | 0% | 0% |  |  |

Notes:
- 142: 17 nov. Se presento un tablero (dashboard) básico y se espera finalizar el 20/11, se encuentra una data incongruente que esta en revisión.
- 147: 17 nov. No se ha iniciado debido a qe depende de la finalización del módulo de requisiciones. / 12/11 No se encuentra aún por dependencia de la finalización del desarrollo de requisiones, se espera ejecutar más tiempo para darle cierre en la fecha planeada.

| ID | WBS | Task | Duration | Start | Finish | Predecessors | Total slack | Free slack | Constraint | Salud | %Real_Base | %Esper_Base |
| --- | --- | --- | --- | --- | --- | --- | --- | --- | --- | --- | --- | --- |
| 152 | 5.3 | **F11: Reporte módulo Compras** | 25d | 2026-11-19 | 2026-12-24 |  | 86d |  |  | Gris | 0% | 0% |
| 153 | 5.3.1 | Entendimiento de parámetros y KPIs | 5d | 2026-11-19 | 2026-11-25 | 92 | 86d | 0d | start no earlier than 2026-11-19 | Gris | 0% | 0% |
| 154 | 5.3.2 | Análisis de tableros actuales | 5d | 2026-11-26 | 2026-12-02 | 153 | 86d | 0d | start no earlier than 2026-11-26 | Gris | 0% | 0% |
| 155 | 5.3.3 | Desarrollo de tableros y reportes | 5d | 2026-12-03 | 2026-12-10 | 154 | 86d | 0d | start no earlier than 2026-12-03 | Gris | 0% | 0% |
| 156 | 5.3.4 | Pruebas de tableros y reportes | 5d | 2026-12-11 | 2026-12-17 | 155 | 86d | 0d | start no earlier than 2026-12-11 | Gris | 0% | 0% |
| 157 | 5.3.5 | Aprobación de tableros y reportes | 5d | 2026-12-18 | 2026-12-24 | 156 | 86d |  | start no earlier than 2026-12-18 | Gris | 0% | 0% |
| 158 | 5.4 | **F12: Reporte módulo Presupuesto** | 25d | 2026-11-26 | 2027-01-04 |  | 81d |  |  | Gris | 0% | 0% |
| 159 | 5.4.1 | Entendimiento de parámetros y KPIs | 5d | 2026-11-26 | 2026-12-02 | 104 | 81d | 0d | start no earlier than 2026-11-26 | Gris | 0% | 0% |
| 160 | 5.4.2 | Análisis de tableros actuales | 5d | 2026-12-03 | 2026-12-10 | 159 | 81d | 0d | start no earlier than 2026-12-03 | Gris | 0% | 0% |
| 161 | 5.4.3 | Desarrollo de tableros y reportes | 5d | 2026-12-11 | 2026-12-17 | 160 | 81d | 0d | start no earlier than 2026-12-11 | Gris | 0% | 0% |
| 162 | 5.4.4 | Pruebas de tableros y reportes | 5d | 2026-12-18 | 2026-12-24 | 161 | 81d | 0d | start no earlier than 2026-12-18 | Gris | 0% | 0% |
| 163 | 5.4.5 | Aprobación de tableros y reportes | 5d | 2026-12-28 | 2027-01-04 | 162 | 81d |  | start no earlier than 2026-12-28 | Gris | 0% | 0% |
| 164 | 5.5 | **F13: Reporte módulo Postcompra** | 25d | 2026-12-03 | 2027-01-12 |  | 76d |  |  | Gris | 0% | 0% |
| 165 | 5.5.1 | Entendimiento de parámetros y KPIs | 5d | 2026-12-03 | 2026-12-10 | 116 | 76d | 0d | start no earlier than 2026-12-03 | Gris | 0% | 0% |
| 166 | 5.5.2 | Análisis de tableros actuales | 5d | 2026-12-11 | 2026-12-17 | 165 | 76d | 0d | start no earlier than 2026-12-11 | Gris | 0% | 0% |
| 167 | 5.5.3 | Desarrollo de tableros y reportes | 5d | 2026-12-18 | 2026-12-24 | 166 | 76d | 0d | start no earlier than 2026-12-18 | Gris | 0% | 0% |
| 168 | 5.5.4 | Pruebas de tableros y reportes | 5d | 2026-12-28 | 2027-01-04 | 167 | 76d | 0d | start no earlier than 2026-12-28 | Gris | 0% | 0% |
| 169 | 5.5.5 | Aprobación de tableros y reportes | 5d | 2027-01-05 | 2027-01-12 | 168 | 76d |  | start no earlier than 2027-01-05 | Gris | 0% | 0% |
| 170 | 5.6 | **F14: Reporte módulo Contratos** | 25d | 2026-12-11 | 2027-01-19 |  | 71d |  |  | Gris | 0% | 0% |
| 171 | 5.6.1 | Entendimiento de parámetros y KPIs | 5d | 2026-12-11 | 2026-12-17 | 128 | 71d | 0d | start no earlier than 2026-12-11 | Gris | 0% | 0% |
| 172 | 5.6.2 | Análisis de tableros actuales | 5d | 2026-12-18 | 2026-12-24 | 171 | 71d | 0d | start no earlier than 2026-12-18 | Gris | 0% | 0% |
| 173 | 5.6.3 | Desarrollo de tableros y reportes | 5d | 2026-12-28 | 2027-01-04 | 172 | 71d | 0d | start no earlier than 2026-12-28 | Gris | 0% | 0% |
| 174 | 5.6.4 | Pruebas de tableros y reportes | 5d | 2027-01-05 | 2027-01-12 | 173 | 71d | 0d | start no earlier than 2027-01-05 | Gris | 0% | 0% |
| 175 | 5.6.5 | Aprobación de tableros y reportes | 5d | 2027-01-13 | 2027-01-19 | 174 | 71d |  | start no earlier than 2027-01-13 | Gris | 0% | 0% |

| ID | WBS | Task | Duration | Start | Finish | Predecessors | Complete | Remaining | Total slack | Free slack | Constraint | Salud | %Real_Base | Frt_Real | Frt_Esper | %Esper_Base |
| --- | --- | --- | --- | --- | --- | --- | --- | --- | --- | --- | --- | --- | --- | --- | --- | --- |
| 176 | 6 | **Integraciones** | 125d | 2026-10-28 A | 2027-05-03 |  | 8% | 115.15d | 0d |  |  | Rojo | 8% | 0,08 | 0,13 | 13% |
| 177 | 6.1 | **Maestro de Proveedores** | 110d | 2026-10-28 A | 2027-04-12 |  | 14% | 94.37d | 15d |  |  | Rojo | 14% | 0,14 | 0,16 | 16% |
| 178 | 6.1.1 | Diseño del Alcance | 5d | 2026-10-28 A | 2026-11-04 A | 7 | 100% |  |  |  | start no earlier than 2026-10-28 | Azul | 100% |  |  | 100% |
| 179 | 6.1.2 | Diseño de la arquitectura | 10d | 2026-11-05 A | 2026-11-19 | 178 | 50% | 5d | 110d |  | start no earlier than 2026-11-05 | Rojo | 50% | 0,5 | 0,7 | 70% |
| 180 | 6.1.3 | Abrir endpoint | 15d | 2026-11-05 A | 2026-11-26 | 178 | 47% | 7.95d | 15d | 0d | start no earlier than 2026-11-05 | Verde | 47% | 0,47 | 0,47 | 47% |
| 181 | 6.1.4 | Lógica interna | 10d | 2026-11-27 | 2026-12-11 | 180 |  |  | 15d | 0d | start no earlier than 2026-11-27 | Gris | 0% |  |  | 0% |
| 182 | 6.1.5 | Definir contrato | 15d | 2026-12-14 | 2027-01-05 | 181 |  |  | 15d | 0d | start no earlier than 2026-12-14 | Gris | 0% |  |  | 0% |
| 183 | 6.1.6 | Especificación técnica de integración | 20d | 2027-01-06 | 2027-02-03 | 182 |  |  | 15d | 0d | start no earlier than 2027-01-06 | Gris | 0% |  |  | 0% |
| 184 | 6.1.7 | Seguimiento desarrollo de integración | 10d | 2027-02-04 | 2027-02-17 | 183 |  |  | 15d | 0d | start no earlier than 2027-02-04 | Gris | 0% |  |  | 0% |
| 185 | 6.1.8 | Pruebas de integración | 10d | 2027-02-18 | 2027-03-03 | 184 |  |  | 15d | 0d | start no earlier than 2027-02-18 | Gris | 0% |  |  | 0% |
| 186 | 6.1.9 | Pruebas y Ajustes | 15d | 2027-03-04 | 2027-03-29 | 185 |  |  | 15d | 0d | start no earlier than 2027-03-04 | Gris | 0% |  |  | 0% |
| 187 | 6.1.10 | Aprobación de integración | 10d | 2027-03-30 | 2027-04-12 | 186 |  |  | 15d |  | start no earlier than 2027-03-30 | Gris | 0% |  |  | 0% |
| 188 | 6.2 | **Centros de Costos** | 110d | 2026-10-28 A | 2027-04-12 |  | 12% | 96.3d | 15d |  |  | Rojo | 12% | 0,12 | 0,16 | 16% |
| 189 | 6.2.1 | Diseño del Alcance | 5d | 2026-10-28 A | 2026-11-04 A | 7 | 100% |  |  |  | start no earlier than 2026-10-28 | Azul | 100% |  |  | 100% |
| 190 | 6.2.2 | Diseño de la arquitectura | 10d | 2026-11-05 A | 2026-11-19 | 189 | 50% | 5d | 110d |  | start no earlier than 2026-11-05 | Rojo | 50% | 0,5 | 0,7 | 70% |
| 191 | 6.2.3 | Abrir endpoint | 15d | 2026-11-05 A | 2026-11-26 | 189 | 33% | 10.05d | 15d | 0d | start no earlier than 2026-11-05 | Rojo | 33% | 0,33 | 0,47 | 47% |
| 192 | 6.2.4 | Lógica interna | 10d | 2026-11-27 | 2026-12-11 | 191 |  |  | 15d | 0d | start no earlier than 2026-11-27 | Gris | 0% |  |  | 0% |
| 193 | 6.2.5 | Definir contrato | 15d | 2026-12-14 | 2027-01-05 | 192 |  |  | 15d | 0d | start no earlier than 2026-12-14 | Gris | 0% |  |  | 0% |
| 194 | 6.2.6 | Especificación técnica de integración | 20d | 2027-01-06 | 2027-02-03 | 193 |  |  | 15d | 0d | start no earlier than 2027-01-06 | Gris | 0% |  |  | 0% |
| 195 | 6.2.7 | Seguimiento desarrollo de integración | 10d | 2027-02-04 | 2027-02-17 | 194 |  |  | 15d | 0d | start no earlier than 2027-02-04 | Gris | 0% |  |  | 0% |
| 196 | 6.2.8 | Pruebas de integración | 10d | 2027-02-18 | 2027-03-03 | 195 |  |  | 15d | 0d | start no earlier than 2027-02-18 | Gris | 0% |  |  | 0% |
| 197 | 6.2.9 | Pruebas y Ajustes | 15d | 2027-03-04 | 2027-03-29 | 196 |  |  | 15d | 0d | start no earlier than 2027-03-04 | Gris | 0% |  |  | 0% |
| 198 | 6.2.10 | Aprobación de integración | 10d | 2027-03-30 | 2027-04-12 | 197 |  |  | 15d |  | start no earlier than 2027-03-30 | Gris | 0% |  |  | 0% |
| 199 | 6.3 | **Cuentas contables** | 110d | 2026-10-28 A | 2027-04-12 |  | 12% | 96.3d | 15d |  |  | Rojo | 12% | 0,12 | 0,16 | 16% |
| 200 | 6.3.1 | Diseño del Alcance | 5d | 2026-10-28 A | 2026-11-04 A | 7 | 100% |  |  |  | start no earlier than 2026-10-28 | Azul | 100% |  |  | 100% |
| 201 | 6.3.2 | Diseño de la arquitectura | 10d | 2026-11-05 A | 2026-11-19 | 200 | 50% | 5d | 110d |  | start no earlier than 2026-11-05 | Rojo | 50% | 0,5 | 0,7 | 70% |
| 202 | 6.3.3 | Abrir endpoint | 15d | 2026-11-05 A | 2026-11-26 | 200 | 33% | 10.05d | 15d | 0d | start no earlier than 2026-11-05 | Rojo | 33% | 0,33 | 0,47 | 47% |
| 203 | 6.3.4 | Lógica interna | 10d | 2026-11-27 | 2026-12-11 | 202 |  |  | 15d | 0d | start no earlier than 2026-11-27 | Gris | 0% |  |  | 0% |
| 204 | 6.3.5 | Definir contrato | 15d | 2026-12-14 | 2027-01-05 | 203 |  |  | 15d | 0d | start no earlier than 2026-12-14 | Gris | 0% |  |  | 0% |
| 205 | 6.3.6 | Especificación técnica de integración | 20d | 2027-01-06 | 2027-02-03 | 204 |  |  | 15d | 0d | start no earlier than 2027-01-06 | Gris | 0% |  |  | 0% |
| 206 | 6.3.7 | Seguimiento desarrollo de integración | 10d | 2027-02-04 | 2027-02-17 | 205 |  |  | 15d | 0d | start no earlier than 2027-02-04 | Gris | 0% |  |  | 0% |
| 207 | 6.3.8 | Pruebas de integración | 10d | 2027-02-18 | 2027-03-03 | 206 |  |  | 15d | 0d | start no earlier than 2027-02-18 | Gris | 0% |  |  | 0% |
| 208 | 6.3.9 | Pruebas y Ajustes | 15d | 2027-03-04 | 2027-03-29 | 207 |  |  | 15d | 0d | start no earlier than 2027-03-04 | Gris | 0% |  |  | 0% |
| 209 | 6.3.10 | Aprobación de integración | 10d | 2027-03-30 | 2027-04-12 | 208 |  |  | 15d |  | start no earlier than 2027-03-30 | Gris | 0% |  |  | 0% |

Notes:
- 179: 17 nov. No se pudo avanzar debido a que no se pudo tener la sesión de revisión (fecha por confirmar).
- 190: 17 nov. No se ha logrado avanzar por capacity se espera avanzar y finalizar el 20/11
- 191: 17 nov. No se ha logrado avanzar por dependencia del cierre del módulo de proveedores.

| ID | WBS | Task | Duration | Start | Finish | Predecessors | Complete | Remaining | Total slack | Free slack | Constraint | Salud | %Real_Base | Frt_Real | Frt_Esper | %Esper_Base |
| --- | --- | --- | --- | --- | --- | --- | --- | --- | --- | --- | --- | --- | --- | --- | --- | --- |
| 210 | 6.4 | **Maestro de artículos** | 110d | 2026-10-28 A | 2027-04-12 |  | 13% | 95.38d | 15d |  |  | Rojo | 13% | 0,13 | 0,16 | 16% |
| 211 | 6.4.1 | Diseño del Alcance | 5d | 2026-10-28 A | 2026-11-04 A | 7 | 100% |  |  |  | start no earlier than 2026-10-28 | Azul | 100% |  |  | 100% |
| 212 | 6.4.2 | Diseño de la arquitectura | 10d | 2026-11-05 A | 2026-11-19 | 211 | 60% | 4d | 110d |  | start no earlier than 2026-11-05 | Rojo | 60% | 0,6 | 0,7 | 70% |
| 213 | 6.4.3 | Abrir endpoint | 15d | 2026-11-05 A | 2026-11-26 | 211 | 33% | 10.05d | 15d | 0d | start no earlier than 2026-11-05 | Rojo | 33% | 0,33 | 0,47 | 47% |
| 214 | 6.4.4 | Lógica interna | 10d | 2026-11-27 | 2026-12-11 | 213 |  |  | 15d | 0d | start no earlier than 2026-11-27 | Gris | 0% |  |  | 0% |
| 215 | 6.4.5 | Definir contrato | 15d | 2026-12-14 | 2027-01-05 | 214 |  |  | 15d | 0d | start no earlier than 2026-12-14 | Gris | 0% |  |  | 0% |
| 216 | 6.4.6 | Especificación técnica de integración | 20d | 2027-01-06 | 2027-02-03 | 215 |  |  | 15d | 0d | start no earlier than 2027-01-06 | Gris | 0% |  |  | 0% |
| 217 | 6.4.7 | Seguimiento desarrollo de integración | 10d | 2027-02-04 | 2027-02-17 | 216 |  |  | 15d | 0d | start no earlier than 2027-02-04 | Gris | 0% |  |  | 0% |
| 218 | 6.4.8 | Pruebas de integración | 10d | 2027-02-18 | 2027-03-03 | 217 |  |  | 15d | 0d | start no earlier than 2027-02-18 | Gris | 0% |  |  | 0% |
| 219 | 6.4.9 | Pruebas y Ajustes | 15d | 2027-03-04 | 2027-03-29 | 218 |  |  | 15d | 0d | start no earlier than 2027-03-04 | Gris | 0% |  |  | 0% |
| 220 | 6.4.10 | Aprobación de integración | 10d | 2027-03-30 | 2027-04-12 | 219 |  |  | 15d |  | start no earlier than 2027-03-30 | Gris | 0% |  |  | 0% |
| 221 | 6.5 | **Ingreso de Orden de Compra** | 110d | 2026-10-28 A | 2027-04-12 |  | 12% | 96.3d | 15d |  |  | Rojo | 12% | 0,12 | 0,16 | 16% |
| 222 | 6.5.1 | Diseño del Alcance | 5d | 2026-10-28 A | 2026-11-04 A | 7 | 100% |  |  |  | start no earlier than 2026-10-28 | Azul | 100% |  |  | 100% |
| 223 | 6.5.2 | Diseño de la arquitectura | 10d | 2026-11-05 A | 2026-11-19 | 222 | 50% | 5d | 110d |  | start no earlier than 2026-11-05 | Rojo | 50% | 0,5 | 0,7 | 70% |
| 224 | 6.5.3 | Abrir endpoint | 15d | 2026-11-05 A | 2026-11-26 | 222 | 33% | 10.05d | 15d | 0d | start no earlier than 2026-11-05 | Rojo | 33% | 0,33 | 0,47 | 47% |
| 225 | 6.5.4 | Lógica interna | 10d | 2026-11-27 | 2026-12-11 | 224 |  |  | 15d | 0d | start no earlier than 2026-11-27 | Gris | 0% |  |  | 0% |
| 226 | 6.5.5 | Definir contrato | 15d | 2026-12-14 | 2027-01-05 | 225 |  |  | 15d | 0d | start no earlier than 2026-12-14 | Gris | 0% |  |  | 0% |
| 227 | 6.5.6 | Especificación técnica de integración | 20d | 2027-01-06 | 2027-02-03 | 226 |  |  | 15d | 0d | start no earlier than 2027-01-06 | Gris | 0% |  |  | 0% |
| 228 | 6.5.7 | Seguimiento desarrollo de integración | 10d | 2027-02-04 | 2027-02-17 | 227 |  |  | 15d | 0d | start no earlier than 2027-02-04 | Gris | 0% |  |  | 0% |
| 229 | 6.5.8 | Pruebas de integración | 10d | 2027-02-18 | 2027-03-03 | 228 |  |  | 15d | 0d | start no earlier than 2027-02-18 | Gris | 0% |  |  | 0% |
| 230 | 6.5.9 | Pruebas y Ajustes | 15d | 2027-03-04 | 2027-03-29 | 229 |  |  | 15d | 0d | start no earlier than 2027-03-04 | Gris | 0% |  |  | 0% |
| 231 | 6.5.10 | Aprobación de integración | 10d | 2027-03-30 | 2027-04-12 | 230 |  |  | 15d |  | start no earlier than 2027-03-30 | Gris | 0% |  |  | 0% |
| 232 | 6.6 | **Facturas** | 110d | 2026-10-28 | 2027-04-12 |  |  |  | 15d |  |  | Rojo | 0% |  | 0,16 | 16% |
| 233 | 6.6.1 | Diseño del Alcance | 5d | 2026-10-28 | 2026-11-04 | 7 |  |  | 15d | 0d | start no earlier than 2026-10-28 | Rojo | 0% |  |  | 100% |
| 234 | 6.6.2 | Diseño de la arquitectura | 10d | 2026-11-05 | 2026-11-19 | 233 |  |  | 110d |  | start no earlier than 2026-11-05 | Rojo | 0% |  | 0,7 | 70% |
| 235 | 6.6.3 | Abrir endpoint | 15d | 2026-11-05 | 2026-11-26 | 233 |  |  | 15d | 0d | start no earlier than 2026-11-05 | Rojo | 0% |  | 0,47 | 47% |
| 236 | 6.6.4 | Lógica interna | 10d | 2026-11-27 | 2026-12-11 | 235 |  |  | 15d | 0d | start no earlier than 2026-11-27 | Gris | 0% |  |  | 0% |
| 237 | 6.6.5 | Definir contrato | 15d | 2026-12-14 | 2027-01-05 | 236 |  |  | 15d | 0d | start no earlier than 2026-12-14 | Gris | 0% |  |  | 0% |
| 238 | 6.6.6 | Especificación técnica de integración | 20d | 2027-01-06 | 2027-02-03 | 237 |  |  | 15d | 0d | start no earlier than 2027-01-06 | Gris | 0% |  |  | 0% |
| 239 | 6.6.7 | Seguimiento desarrollo de integración | 10d | 2027-02-04 | 2027-02-17 | 238 |  |  | 15d | 0d | start no earlier than 2027-02-04 | Gris | 0% |  |  | 0% |
| 240 | 6.6.8 | Pruebas de integración | 10d | 2027-02-18 | 2027-03-03 | 239 |  |  | 15d | 0d | start no earlier than 2027-02-18 | Gris | 0% |  |  | 0% |
| 241 | 6.6.9 | Pruebas y Ajustes | 15d | 2027-03-04 | 2027-03-29 | 240 |  |  | 15d | 0d | start no earlier than 2027-03-04 | Gris | 0% |  |  | 0% |
| 242 | 6.6.10 | Aprobación de integración | 10d | 2027-03-30 | 2027-04-12 | 241 |  |  | 15d |  | start no earlier than 2027-03-30 | Gris | 0% |  |  | 0% |

Notes:
- 212: Text10: Se esta revisando con gestión documental para ser enviado al proveedor
- 223: Text10: Pendiente fecha de finalización
- 224: Text10: Pendiente fecha de finalización
- 233: 17/11 No se ha avanzado debido a que el proveedor debe compartir la información de como se debe enviar la factura, se revisará con el proveedor para adelantar esta actividad (pendiente fecha). / 12/11 No se ha avanzado debido a que el proveedor debe compartir la información de como se debe enviar la factura, se revisará con el proveedor para adelantar esta actividad (pendiente fecha). / Text10: Pendiente fecha de finalización
- 234: 17/11 No se ha avanzado debido a que el proveedor debe compartir la información de como se debe enviar la factura, se revisará con el proveedor para adelantar esta actividad (pendiente fecha). / 12/11 No se ha avanzado debido a que el proveedor debe compartir la información de como se debe enviar la factura, se revisará con el proveedor para adelantar esta actividad (pendiente fecha). / Text10: Pendiente fecha de finalización
- 235: 17/11 No se ha avanzado debido a que el proveedor debe compartir la información de como se debe enviar la factura, se revisará con el proveedor para adelantar esta actividad (pendiente fecha). / 12/11 No se ha avanzado debido a que el proveedor debe compartir la información de como se debe enviar la factura, se revisará con el proveedor para adelantar esta actividad (pendiente fecha). / Text10: Pendiente fecha de finalización

| ID | WBS | Task | Duration | Start | Finish | Predecessors | Complete | Remaining | Total slack | Free slack | Constraint | Salud | %Real_Base | Frt_Esper | %Esper_Base | Text10 | Frt_Real |
| --- | --- | --- | --- | --- | --- | --- | --- | --- | --- | --- | --- | --- | --- | --- | --- | --- | --- |
| 243 | 6.7 | **Pagos** | 110d | 2026-10-28 | 2027-04-12 |  |  |  | 15d |  |  | Rojo | 0% | 0,16 | 16% |  |  |
| 244 | 6.7.1 | Diseño del Alcance | 5d | 2026-10-28 | 2026-11-04 | 7 |  |  | 15d | 0d | start no earlier than 2026-10-28 | Rojo | 0% |  | 100% | Pendiente fecha de finalización |  |
| 245 | 6.7.2 | Diseño de la arquitectura | 10d | 2026-11-05 | 2026-11-19 | 244 |  |  | 110d |  | start no earlier than 2026-11-05 | Rojo | 0% | 0,7 | 70% | Pendiente fecha de finalización |  |
| 246 | 6.7.3 | Abrir endpoint | 15d | 2026-11-05 | 2026-11-26 | 244 |  |  | 15d | 0d | start no earlier than 2026-11-05 | Rojo | 0% | 0,47 | 47% | Pendiente fecha de finalización |  |
| 247 | 6.7.4 | Lógica interna | 10d | 2026-11-27 | 2026-12-11 | 246 |  |  | 15d | 0d | start no earlier than 2026-11-27 | Gris | 0% |  | 0% |  |  |
| 248 | 6.7.5 | Definir contrato | 15d | 2026-12-14 | 2027-01-05 | 247 |  |  | 15d | 0d | start no earlier than 2026-12-14 | Gris | 0% |  | 0% |  |  |
| 249 | 6.7.6 | Especificación técnica de integración | 20d | 2027-01-06 | 2027-02-03 | 248 |  |  | 15d | 0d | start no earlier than 2027-01-06 | Gris | 0% |  | 0% |  |  |
| 250 | 6.7.7 | Seguimiento desarrollo de integración | 10d | 2027-02-04 | 2027-02-17 | 249 |  |  | 15d | 0d | start no earlier than 2027-02-04 | Gris | 0% |  | 0% |  |  |
| 251 | 6.7.8 | Pruebas de integración | 10d | 2027-02-18 | 2027-03-03 | 250 |  |  | 15d | 0d | start no earlier than 2027-02-18 | Gris | 0% |  | 0% |  |  |
| 252 | 6.7.9 | Pruebas y Ajustes | 15d | 2027-03-04 | 2027-03-29 | 251 |  |  | 15d | 0d | start no earlier than 2027-03-04 | Gris | 0% |  | 0% |  |  |
| 253 | 6.7.10 | Aprobación de integración | 10d | 2027-03-30 | 2027-04-12 | 252 |  |  | 15d |  | start no earlier than 2027-03-30 | Gris | 0% |  | 0% |  |  |
| 254 | 6.8 | **Integración contable AS/400** | 125d | 2026-10-28 A | 2027-05-03 |  | 8% | 115d | 0d |  |  | Rojo | 8% | 0,1 | 10% |  | 0,08 |
| 255 | 6.8.1 | Diseño del Alcance | 5d | 2026-10-28 A | 2026-11-04 A | 7 | 100% |  |  |  | start no earlier than 2026-10-28 | Azul | 100% |  | 100% |  |  |
| 256 | 6.8.2 | Diseño de la arquitectura | 10d | 2026-11-05 A | 2026-11-19 | 255 | 50% | 5d | 0d |  | start no earlier than 2026-11-05 | Rojo | 50% | 0,7 | 70% |  | 0,5 |
| 257 | 6.8.3 | Homologación cuentas | 10d | 2026-11-20 | 2026-12-03 | 256 |  |  | 0d |  | start no earlier than 2026-11-20 | Gris | 0% |  | 0% |  |  |
| 258 | 6.8.4 | Reversión | 10d | 2026-12-04 | 2026-12-18 | 257 |  |  | 0d |  | start no earlier than 2026-12-04 | Gris | 0% |  | 0% |  |  |
| 259 | 6.8.5 | Lógica interna | 10d | 2026-12-21 | 2027-01-05 | 258 |  |  | 0d |  | start no earlier than 2026-12-21 | Gris | 0% |  | 0% |  |  |
| 260 | 6.8.6 | Definir contrato | 15d | 2027-01-06 | 2027-01-27 | 259 |  |  | 0d |  | start no earlier than 2027-01-06 | Gris | 0% |  | 0% |  |  |
| 261 | 6.8.7 | Especificación técnica de integración | 20d | 2027-01-28 | 2027-02-24 | 260 |  |  | 0d |  | start no earlier than 2027-01-28 | Gris | 0% |  | 0% |  |  |
| 262 | 6.8.8 | Seguimiento desarrollo de integración | 10d | 2027-02-25 | 2027-03-10 | 261 |  |  | 0d |  | start no earlier than 2027-02-25 | Gris | 0% |  | 0% |  |  |
| 263 | 6.8.9 | Pruebas de integración | 10d | 2027-03-11 | 2027-03-29 | 262 |  |  | 0d |  | start no earlier than 2027-03-11 | Gris | 0% |  | 0% |  |  |
| 264 | 6.8.10 | Pruebas y Ajustes | 15d | 2027-03-30 | 2027-04-19 | 263 |  |  | 0d |  | start no earlier than 2027-03-30 | Gris | 0% |  | 0% |  |  |
| 265 | 6.8.11 | Aprobación de integración | 10d | 2027-04-20 | 2027-05-03 | 264 |  |  | 0d |  | start no earlier than 2027-04-20 | Gris | 0% |  | 0% |  |  |
| 266 | 6.9 | **Integración DIAN** | 70d | 2026-11-20 | 2027-03-03 |  |  |  | 40d |  |  | Gris | 0% |  | 0% |  |  |
| 267 | 6.9.1 | Diseño integración DIAN | 10d | 2026-11-20 | 2026-12-03 | 255 |  |  | 40d | 0d | start no earlier than 2026-11-20 | Gris | 0% |  | 0% |  |  |
| 268 | 6.9.2 | Diseño solución XML - UBL | 15d | 2026-12-04 | 2026-12-28 | 267 |  |  | 40d | 0d | start no earlier than 2026-12-04 | Gris | 0% |  | 0% |  |  |
| 269 | 6.9.3 | Desarrollo captura CUFE | 10d | 2026-12-29 | 2027-01-13 | 268 |  |  | 40d | 0d | start no earlier than 2026-12-29 | Gris | 0% |  | 0% |  |  |
| 270 | 6.9.4 | Configuración acuse automático | 10d | 2027-01-14 | 2027-01-27 | 269 |  |  | 40d | 0d | start no earlier than 2027-01-14 | Gris | 0% |  | 0% |  |  |
| 271 | 6.9.5 | Desarrollo integración DIAN | 15d | 2027-01-28 | 2027-02-17 | 270 |  |  | 40d | 0d | start no earlier than 2027-01-28 | Gris | 0% |  | 0% |  |  |
| 272 | 6.9.6 | Pruebas | 5d | 2027-02-18 | 2027-02-24 | 271 |  |  | 40d | 0d | start no earlier than 2027-02-18 | Gris | 0% |  | 0% |  |  |
| 273 | 6.9.7 | Aceptación | 5d | 2027-02-25 | 2027-03-03 | 272 |  |  | 40d |  | start no earlier than 2027-02-25 | Gris | 0% |  | 0% |  |  |

Notes:
- 244: 17 nov. No se ha revisado el resultado de los flujos con proveedor, se espera validar el resultado el 17/11 y tener fecha de cierre de la actividad.
- 245: 17 nov. No se ha revisado el resultado de los flujos con proveedor, se espera validar el resultado el 17/11 y tener fecha de cierre de la actividad.
- 246: 17 nov. No se ha revisado el resultado de los flujos con proveedor, se espera validar el resultado el 17/11 y tener fecha de cierre de la actividad.
- 256: 17 nov. No se ha revisado con el proveedor se espera validar el resultado el 17/11 y tener fecha de cierre de la actividad.

| ID | WBS | Task | Duration | Start | Finish | Predecessors | Total slack | Free slack | Constraint | Salud | %Real_Base | %Esper_Base | Frt_Esper |
| --- | --- | --- | --- | --- | --- | --- | --- | --- | --- | --- | --- | --- | --- |
| 274 | 6.10 | **Pruebas integrales y Validación (UAT)** | 35d | 2027-02-18 | 2027-04-12 |  | 15d |  |  | Gris | 0% | 0% |  |
| 275 | 6.10.1 | Pruebas de aplicación | 35d | 2027-02-18 | 2027-04-12 | 184 | 15d |  | start no earlier than 2027-02-18 | Gris | 0% | 0% |  |
| 276 | 6.10.2 | Arquitectura integraciones | 15d | 2027-02-18 | 2027-03-10 | 184 | 35d |  | start no earlier than 2027-02-18 | Gris | 0% | 0% |  |
| 277 | 6.10.3 | Arquitectura de seguridad | 15d | 2027-02-18 | 2027-03-10 | 184 | 35d |  | start no earlier than 2027-02-18 | Gris | 0% | 0% |  |
| 278 | 6.10.4 | Arquitectura de datos | 15d | 2027-02-18 | 2027-03-10 | 184 | 35d |  | start no earlier than 2027-02-18 | Gris | 0% | 0% |  |
| 279 | 7 | **Capacitación Operativa - Go-Live completo** | 76d | 2026-11-13 | 2027-03-05 |  | 38d |  |  | Amarillo | 0% | 1% | 0,01 |
| 280 | 7.1 | **Transversal - Preparación** | 11d | 2026-11-13 | 2026-11-30 |  | 103d |  |  | Rojo | 0% | 13% | 0,13 |
| 281 | 7.1.1 | Alinear actividades realizadas anterior al cambio | 1d | 2026-11-13 | 2026-11-13 |  | 109d | 0d | start no earlier than 2026-11-13 | Rojo | 0% | 100% |  |
| 282 | 7.1.2 | Mapa de roles impactados y segmentación en la primera fase | 5d | 2026-11-13 | 2026-11-20 | 281SS | 109d |  | start no earlier than 2026-11-13 | Rojo | 0% | 20% | 0,2 |
| 283 | 7.1.3 | Plan de trabajo y lina base de adopción | 10d | 2026-11-17 | 2026-11-30 |  | 103d |  | start no earlier than 2026-11-17 | Gris | 0% | 0% |  |
| 284 | 7.2 | **Módulo 2 · Proveedores - Sarlaft** | 32d | 2026-12-14 | 2027-01-29 |  | 63d |  |  | Gris | 0% | 0% |  |
| 285 | 7.2.1 | Sesión con proveedor para capacitación | 5d | 2026-12-14 | 2026-12-18 |  | 77d | 0d | start no earlier than 2026-12-14 | Gris | 0% | 0% |  |
| 286 | 7.2.2 | Entrenamiento módulo 2 | 8d | 2026-12-21 | 2026-12-31 | 285 | 77d | 0d | start no earlier than 2026-11-13 | Gris | 0% | 0% |  |
| 287 | 7.2.3 | Material de apoyo en plataforma next talent | 5d | 2027-01-04 | 2027-01-08 | 286 | 77d |  |  | Gris | 0% | 0% |  |
| 288 | 7.2.4 | Hito:Certificación | 5d | 2027-01-25 | 2027-01-29 |  | 63d |  | start no earlier than 2027-01-25 | Gris | 0% | 0% |  |
| 289 | 7.2.5 | Hito:Go - live de usuarios finales | 1d | 2027-01-08 | 2027-01-08 |  | 77d |  | start no earlier than 2027-01-08 | Gris | 0% | 0% |  |
| 290 | 7.3 | **Módulo 3 · Evaluación (usuarios administradores de contrato y proveedores)** | 17d | 2026-12-07 | 2026-12-31 |  | 82d |  |  | Gris | 0% | 0% |  |
| 291 | 7.3.1 | Kickoff con participantes del módulo 3 | 4d | 2026-12-07 | 2026-12-11 |  | 90d | 0d | start no earlier than 2026-12-07 | Gris | 0% | 0% |  |
| 292 | 7.3.2 | Entrenamiento módulo 3 | 3d | 2026-12-14 | 2026-12-16 | 291 | 90d | 0d | start no earlier than 2026-11-13 | Gris | 0% | 0% |  |
| 293 | 7.3.3 | Material de apoyo en plataforma Next Talent | 5d | 2026-12-14 | 2026-12-18 | 292SS | 90d |  |  | Gris | 0% | 0% |  |
| 294 | 7.3.4 | Hito:Participantes certificados | 4d | 2026-12-28 | 2026-12-31 |  | 82d |  | start no earlier than 2026-12-28 | Gris | 0% | 0% |  |
| 295 | 7.3.5 | Hito:Go-live de usuarios finales | 1d | 2026-12-16 | 2026-12-16 |  | 92d |  | start no earlier than 2026-12-16 | Gris | 0% | 0% |  |
| 296 | 7.4 | **Módulo 4 · Requisiciones (administradores - Solicitantes)** | 18d | 2026-12-14 | 2027-01-08 |  | 77d |  |  | Gris | 0% | 0% |  |
| 297 | 7.4.1 | Kickoff con participantes del módulo 4 | 5d | 2026-12-14 | 2026-12-18 |  | 90d |  | start no earlier than 2026-12-14 | Gris | 0% | 0% |  |
| 298 | 7.4.2 | Entrenamiento módulo 4 | 6d | 2026-12-15 | 2026-12-22 |  | 88d |  | start no earlier than 2026-12-15 | Gris | 0% | 0% |  |
| 299 | 7.4.3 | Material de apoyo en plataforma Next Talent | 6d | 2026-12-23 | 2026-12-31 |  | 82d |  | start no earlier than 2026-12-23 | Gris | 0% | 0% |  |
| 300 | 7.4.4 | Hito:Participantes certificados | 4d | 2026-12-28 | 2026-12-31 |  | 82d |  | start no earlier than 2026-12-28 | Gris | 0% | 0% |  |
| 301 | 7.4.5 | Hito:Go-live de usuarios finales | 1d | 2026-12-23 | 2026-12-23 |  | 87d |  | start no earlier than 2026-12-23 | Gris | 0% | 0% |  |
| 302 | 7.4.6 | Pulso de adopción | 5d | 2027-01-04 | 2027-01-08 |  | 77d |  | start no earlier than 2027-01-04 | Gris | 0% | 0% |  |

Notes:
- 279: 17/11 Gestión humana compartió el gantt de actividades / 12/11 Se esta validando con Gestión Humana las actividades de gestión de cambios- se realizó un formato para las actividades se agendo sesión para el 13/11 para validar cronograma e inicio de ejecución
- 285: .
- 291: .

| ID | WBS | Task | Duration | Start | Finish | Predecessors | Total slack | Free slack | Constraint | Salud | %Real_Base | %Esper_Base |
| --- | --- | --- | --- | --- | --- | --- | --- | --- | --- | --- | --- | --- |
| 303 | 7.5 | **Módulo 5 · Compras (administradores, solicitantes)** | 27d | 2026-12-14 | 2027-01-22 |  | 68d |  |  | Gris | 0% | 0% |
| 304 | 7.5.1 | Kickoff con participantes del módulo 5 | 5d | 2026-12-14 | 2026-12-18 |  | 90d |  | start no earlier than 2026-12-14 | Gris | 0% | 0% |
| 305 | 7.5.2 | Entrenamiento módulo 5 | 4d | 2026-12-21 | 2026-12-24 |  | 86d |  | start no earlier than 2026-12-21 | Gris | 0% | 0% |
| 306 | 7.5.3 | Material de apoyo en plataforma Next Talent | 4d | 2026-12-28 | 2026-12-31 |  | 82d |  | start no earlier than 2026-12-28 | Gris | 0% | 0% |
| 307 | 7.5.4 | Hito:Participantes certificados | 5d | 2027-01-18 | 2027-01-22 |  | 68d |  | start no earlier than 2027-01-18 | Gris | 0% | 0% |
| 308 | 7.5.5 | Hito:Go-live de usuarios finales | 1d | 2026-12-31 | 2026-12-31 |  | 82d |  | start no earlier than 2026-12-31 | Gris | 0% | 0% |
| 309 | 7.6 | **Módulo 6 Presupuesto (Harold, felix)** | 22d | 2026-12-21 | 2027-01-22 |  | 68d |  |  | Gris | 0% | 0% |
| 310 | 7.6.1 | Kickoff con participantes del módulo 6 | 5d | 2026-12-21 | 2026-12-28 |  | 85d |  | start no earlier than 2026-12-21 | Gris | 0% | 0% |
| 311 | 7.6.2 | Entrenamiento módulo 6 | 10d | 2026-12-22 | 2027-01-06 |  | 79d |  | start no earlier than 2026-12-22 | Gris | 0% | 0% |
| 312 | 7.6.3 | Material de apoyo en plataforma Next Talent | 4d | 2026-12-28 | 2026-12-31 |  | 82d |  | start no earlier than 2026-12-28 | Gris | 0% | 0% |
| 313 | 7.6.4 | Hito:Participantes certificados | 5d | 2027-01-18 | 2027-01-22 |  | 68d |  | start no earlier than 2027-01-18 | Gris | 0% | 0% |
| 314 | 7.6.5 | Hito:Go-live de usuarios finales | 1d | 2027-01-08 | 2027-01-08 |  | 77d |  | start no earlier than 2027-01-08 | Gris | 0% | 0% |
| 315 | 7.7 | **Módulo 7 Post compra (usuarios, contabilidad)** | 24d | 2027-01-04 | 2027-02-05 |  | 58d |  |  | Gris | 0% | 0% |
| 316 | 7.7.1 | Kickoff con participantes del módulo 7 | 5d | 2027-01-04 | 2027-01-08 |  | 73d | 0d | start no earlier than 2027-01-04 | Gris | 0% | 0% |
| 317 | 7.7.2 | Entrenamiento módulo 7 | 4d | 2027-01-12 | 2027-01-15 | 316 | 73d |  | start no earlier than 2027-01-11 | Gris | 0% | 0% |
| 318 | 7.7.3 | Material de apoyo en plataforma Next Talent | 5d | 2027-01-18 | 2027-01-22 |  | 68d |  | start no earlier than 2027-01-18 | Gris | 0% | 0% |
| 319 | 7.7.4 | Hito:Participantes certificados | 5d | 2027-02-01 | 2027-02-05 |  | 58d |  | start no earlier than 2027-02-01 | Gris | 0% | 0% |
| 320 | 7.7.5 | Hito:Go-live de usuarios finales | 1d | 2027-01-18 | 2027-01-18 |  | 72d |  | start no earlier than 2027-01-18 | Gris | 0% | 0% |
| 321 | 7.8 | **Módulo 8 Contratos (administradores de contrato, seguridad de la información, contabilidad,legal, riesgo, cumplimiento.)** | 25d | 2027-01-18 | 2027-02-19 |  | 48d |  |  | Gris | 0% | 0% |
| 322 | 7.8.1 | Kickoff con participantes del módulo 8 | 5d | 2027-01-18 | 2027-01-22 |  | 68d |  | start no earlier than 2027-01-18 | Gris | 0% | 0% |
| 323 | 7.8.2 | Entrenamiento módulo 8 | 5d | 2027-01-25 | 2027-01-29 |  | 63d |  | start no earlier than 2027-01-25 | Gris | 0% | 0% |
| 324 | 7.8.3 | Material de apoyo en plataforma Next Talent | 5d | 2027-02-01 | 2027-02-05 |  | 58d |  | start no earlier than 2027-02-01 | Gris | 0% | 0% |
| 325 | 7.8.4 | Hito:Participantes certificados | 5d | 2027-02-15 | 2027-02-19 |  | 48d |  | start no earlier than 2027-02-15 | Gris | 0% | 0% |
| 326 | 7.8.5 | Hito:Go-live de usuarios finales | 1d | 2027-02-01 | 2027-02-01 |  | 62d |  | start no earlier than 2027-02-01 | Gris | 0% | 0% |

| ID | WBS | Task | Duration | Start | Finish | Predecessors | Total slack | Free slack | Constraint | Salud | %Real_Base | %Esper_Base |
| --- | --- | --- | --- | --- | --- | --- | --- | --- | --- | --- | --- | --- |
| 327 | 7.9 | **Cierre · Medición y sostenimiento** | 10d | 2027-02-22 | 2027-03-05 |  | 38d |  |  | Gris | 0% | 0% |
| 328 | 7.9.1 | Comparar adopción contra línea base y entre fases | 5d | 2027-02-22 | 2027-02-26 |  | 43d |  | start no earlier than 2027-02-22 | Gris | 0% | 0% |
| 329 | 7.9.2 | Retrospectiva, re-evaluación del nivel de impacto y traspaso a operación | 10d | 2027-02-22 | 2027-03-05 |  | 38d | 9d | start no earlier than 2027-02-22 | Gris | 0% | 0% |
| 330 | 7.9.3 | Hito:Cierre del proyecto | 1d | 2027-03-05 | 2027-03-05 | 329SS | 38d |  | start no earlier than 2027-03-05 | Gris | 0% | 0% |
